# 百味

Schedule from MS Project, 2020-03-12 to 2020-06-15, scheduled back from the finish, costs in ¥.

## Calendars

- 标准: Mon-Fri 08:00-12:00, 13:00-17:00; Sat-Sun off.

## Resources

| Resource |
| --- |
| 马晓艳 |
| 赵一鸣 |
| 安文悦 |
| 刘梦婷 |
| 曾雨晴 |
| 李雪纯 |

## Schedule

| ID | WBS | Task | Duration | Start | Finish | Predecessors | Total slack | Free slack | Constraint | Resources | Work | Cost |
| --- | --- | --- | --- | --- | --- | --- | --- | --- | --- | --- | --- | --- |
| 1 | 1 | **启动** | 6d | 2020-03-16 | 2020-03-23 |  |  |  | as late as possible |  | 64h | 3,200 |
| 2 | 1.1 | 任命项目经理 | 1d | 2020-03-23 | 2020-03-23 |  | 5d | 0d | as late as possible | 马晓艳 | 8h | 400 |
| 3 | 1.2 | 组件核心团队 | 1d | 2020-03-12 | 2020-03-12 |  | -2d | 0d | as late as possible | 马晓艳; 赵一鸣 | 16h | 800 |
| 4 | 1.3 | 分析关系人 | 1d | 2020-03-12 | 2020-03-12 |  | -2d | 0d | as late as possible | 马晓艳 | 8h | 400 |
| 5 | 1.4 | 里程碑计划 | 1d | 2020-03-12 | 2020-03-12 |  | -2d | 0d | as late as possible | 马晓艳 | 8h | 400 |
| 6 | 1.5 | 制定项目章程 | 1d | 2020-03-13 | 2020-03-13 | 3, 4, 5 | -2d | 0d | as late as possible | 马晓艳 | 8h | 400 |
| 7 | 1.6 | 启动大会 | 1d | 2020-03-16 | 2020-03-16 | 6 | -2d | 0d | as late as possible | 马晓艳; 赵一鸣 | 16h | 800 |
| 8 | 2 | **规划** | 20d | 2020-04-03 | 2020-04-30 |  |  |  | as late as possible |  | 464h | 23,200 |
| 9 | 2.1 | **规划范围** | 15d | 2020-04-06 | 2020-04-24 |  |  |  | as late as possible |  | 208h | 10,400 |
| 10 | 2.1.1 | 制定需求说明书 | 10d | 2020-03-17 | 2020-03-30 | 7 | -14d | 0d | as late as possible | 赵一鸣 | 80h | 4,000 |
| 11 | 2.1.2 | 界面设计 | 5d | 2020-03-31 | 2020-04-06 | 10 | -14d | 0d | as late as possible | 安文悦 | 40h | 2,000 |
| 12 | 2.1.3 | 详细设计说明书 | 5d | 2020-03-31 | 2020-04-06 | 10 | -14d | 0d | as late as possible | 赵一鸣 | 40h | 2,000 |
| 13 | 2.1.4 | 范围说明书 | 3d | 2020-04-02 | 2020-04-06 | 10 | -12d | 0d | as late as possible | 马晓艳 | 24h | 1,200 |
| 14 | 2.1.5 | 创建WBS | 2d | 2020-04-07 | 2020-04-08 | 13, 11, 12 | -14d | 0d | as late as possible | 马晓艳 | 16h | 800 |
| 15 | 2.1.6 | 形成范围基准 | 1d | 2020-04-09 | 2020-04-09 | 14 | -14d | 0d | as late as possible | 马晓艳 | 8h | 400 |
| 16 | 2.2 | **规划时间** | 6d | 2020-04-10 | 2020-04-17 |  | -14d | 0d | as late as possible |  | 48h | 2,400 |
| 17 | 2.2.1 | 排列工作包顺序 | 1d | 2020-04-10 | 2020-04-10 | 15 | -14d | 0d | as late as possible | 马晓艳 | 8h | 400 |
| 18 | 2.2.2 | 估算资源 | 2d | 2020-04-13 | 2020-04-14 | 17 | -14d | 0d | as late as possible | 马晓艳 | 16h | 800 |
| 19 | 2.2.3 | 估算持续时间 | 2d | 2020-04-15 | 2020-04-16 | 18 | -14d | 0d | as late as possible | 马晓艳 | 16h | 800 |
| 20 | 2.2.4 | 制定进度计划 | 1d | 2020-04-17 | 2020-04-17 | 19 | -14d | 0d | as late as possible | 马晓艳 | 8h | 400 |
| 21 | 2.3 | **规划成本** | 5d | 2020-04-20 | 2020-04-24 |  | -14d | 0d | as late as possible |  | 40h | 2,000 |
| 22 | 2.3.1 | 项目成本估算 | 3d | 2020-04-20 | 2020-04-22 | 20 | -14d | 0d | as late as possible | 马晓艳 | 24h | 1,200 |
| 23 | 2.3.2 | 项目预算 | 2d | 2020-04-23 | 2020-04-24 | 22 | -14d | 0d | as late as possible | 马晓艳 | 16h | 800 |
| 24 | 2.4 | **规划质量** | 4d | 2020-04-21 | 2020-04-24 |  | -7d | 0d | as late as possible |  | 32h | 1,600 |
| 25 | 2.4.1 | 制定测试计划 | 2d | 2020-04-21 | 2020-04-22 | 15 | -7d | 0d | as late as possible | 赵一鸣 | 16h | 800 |
| 26 | 2.4.2 | 制定测试用例 | 2d | 2020-04-23 | 2020-04-24 | 25 | -7d | 0d | as late as possible | 赵一鸣 | 16h | 800 |

| ID | WBS | Task | Duration | Start | Finish | Predecessors | Total slack | Free slack | Constraint | Resources | Work | Cost |
| --- | --- | --- | --- | --- | --- | --- | --- | --- | --- | --- | --- | --- |
| 27 | 2.5 | **规划人力资源** | 4d | 2020-04-17 | 2020-04-22 |  | -12d | 0d | as late as possible |  | 32h | 1,600 |
| 28 | 2.5.1 | 制定人力资源计划 | 2d | 2020-04-17 | 2020-04-20 | 18 | -12d | 0d | as late as possible | 马晓艳 | 16h | 800 |
| 29 | 2.5.2 | 制定人员配备管理计划 | 2d | 2020-04-21 | 2020-04-22 | 28 | -12d | 0d | as late as possible | 马晓艳 | 16h | 800 |
| 30 | 2.6 | **规划沟通** | 2d | 2020-04-23 | 2020-04-24 |  | -12d | 0d | as late as possible |  | 16h | 800 |
| 31 | 2.6.1 | 制定沟通管理计划 | 2d | 2020-04-23 | 2020-04-24 | 29 | -12d | 0d | as late as possible | 马晓艳 | 16h | 800 |
| 32 | 2.7 | **规划采购** | 7d | 2020-04-16 | 2020-04-24 |  | -13d | 0d | as late as possible |  | 56h | 2,800 |
| 33 | 2.7.1 | 自制外购分析 | 2d | 2020-04-16 | 2020-04-17 | 18 | -13d | 0d | as late as possible | 马晓艳 | 16h | 800 |
| 34 | 2.7.2 | 指定采购文件 | 5d | 2020-04-20 | 2020-04-24 | 33 | -13d | 0d | as late as possible | 马晓艳 | 40h | 2,000 |
| 35 | 2.8 | **规划风险** | 3d | 2020-04-27 | 2020-04-29 |  | -14d | 0d | as late as possible |  | 24h | 1,200 |
| 36 | 2.8.1 | 识别风险 | 1d | 2020-04-27 | 2020-04-27 | 16, 21, 24, 27, 30, 32 | -14d | 0d | as late as possible | 马晓艳 | 8h | 400 |
| 37 | 2.8.2 | 风险分析 | 1d | 2020-04-28 | 2020-04-28 | 36 | -14d | 0d | as late as possible | 马晓艳 | 8h | 400 |
| 38 | 2.8.3 | 制定风险登记册 | 1d | 2020-04-29 | 2020-04-29 | 37 | -14d | 0d | as late as possible | 马晓艳 | 8h | 400 |
| 39 | 2.9 | 规划整合 | 1d | 2020-04-30 | 2020-04-30 | 38 | -14d | 0d | as late as possible | 马晓艳 | 8h | 400 |
| 40 | 3 | **执行有监控** | 22d | 2020-05-15 | 2020-06-15 |  | -3d | 0d | as late as possible |  | 664h | 33,200 |
| 41 | 3.1 | 组件项目团队 | 3d | 2020-05-15 | 2020-05-19 | 8 | -4d | 0d | as late as possible | 安文悦; 曾雨晴; 李雪纯; 刘梦婷; 马晓艳; 赵一鸣 | 144h | 7,200 |
| 42 | 3.2 | **项目执行** | 17d | 2020-05-20 | 2020-06-11 |  | -3d | 0d | as late as possible |  | 200h | 10,000 |
| 43 | 3.2.1 | **用户模块** | 16d | 2020-05-21 | 2020-06-11 |  |  |  | as late as possible |  | 112h | 5,600 |
| 44 | 3.2.1.1 | 注册登录 | 2d | 2020-05-20 | 2020-05-21 | 41 | -4d | 0d | as late as possible | 曾雨晴 | 16h | 800 |
| 45 | 3.2.1.2 | 首页 | 3d | 2020-05-22 | 2020-05-26 | 44 | -4d | 0d | as late as possible | 曾雨晴 | 24h | 1,200 |
| 46 | 3.2.1.3 | 发布作品 | 1d | 2020-05-27 | 2020-05-27 | 45 | -4d | 0d | as late as possible | 曾雨晴 | 8h | 400 |
| 47 | 3.2.1.4 | 作品分类 | 1d | 2020-05-28 | 2020-05-28 | 46 | -4d | 0d | start no later than 2020-05-28 |  |  |  |
| 48 | 3.2.1.5 | 浏览作品 | 1d | 2020-05-29 | 2020-05-29 | 46 | -3d | 0d | as late as possible | 曾雨晴 | 8h | 400 |
| 49 | 3.2.1.6 | 记录笔记 | 1d | 2020-06-01 | 2020-06-01 | 48 | -3d | 0d | as late as possible | 曾雨晴 | 8h | 400 |
| 50 | 3.2.1.7 | 发布评论 | 1d | 2020-06-02 | 2020-06-02 | 49 | -3d | 0d | as late as possible | 曾雨晴 | 8h | 400 |
| 51 | 3.2.1.8 | 收藏 | 2d | 2020-06-05 | 2020-06-08 | 50 | -1d | 0d | as late as possible | 曾雨晴 | 16h | 800 |
| 52 | 3.2.1.9 | 个人设置 | 3d | 2020-06-09 | 2020-06-11 | 51 | -1d | 0d | as late as possible | 曾雨晴 | 24h | 1,200 |

| ID | WBS | Task | Duration | Start | Finish | Predecessors | Total slack | Free slack | Constraint | Resources | Work | Cost |
| --- | --- | --- | --- | --- | --- | --- | --- | --- | --- | --- | --- | --- |
| 53 | 3.2.2 | **管理员模块** | 6d | 2020-06-04 | 2020-06-11 |  |  |  | as late as possible |  | 88h | 4,400 |
| 54 | 3.2.2.1 | 作品分类审核 | 1d | 2020-06-04 | 2020-06-04 | 47 | 0d |  | start no later than 2020-06-04 |  |  |  |
| 55 | 3.2.2.2 | 作品审核 | 1d | 2020-06-04 | 2020-06-04 | 46 | 1d | 0d | start no later than 2020-06-04 | 刘梦婷 | 8h | 400 |
| 56 | 3.2.2.3 | 评论审核 | 1d | 2020-06-03 | 2020-06-03 | 50 | -3d | 0d | start no later than 2020-06-05 | 刘梦婷 | 8h | 400 |
| 57 | 3.2.2.4 | 统计分析 | 2d | 2020-06-04 | 2020-06-05 | 56 | -3d | 0d | as late as possible | 刘梦婷 | 16h | 800 |
| 58 | 3.2.2.5 | 广告推送 | 2d | 2020-06-08 | 2020-06-09 | 57 | -3d | 0d | as late as possible | 刘梦婷 | 16h | 800 |
| 59 | 3.2.2.6 | 优秀作品推送 | 2d | 2020-06-10 | 2020-06-11 | 58 | -3d | 0d | as late as possible | 刘梦婷 | 16h | 800 |
| 60 | 3.2.2.7 | 备份 | 3d | 2020-06-09 | 2020-06-11 |  | 3d | 0d | as late as possible | 刘梦婷 | 24h | 1,200 |
| 61 | 3.3 | **项目监控** | 4d | 2020-06-10 | 2020-06-15 |  | -2d | 0d | as late as possible |  | 320h | 16,000 |
| 62 | 3.3.1 | 各指标监控 | 1d | 2020-06-10 | 2020-06-10 | 41 | 11d | 0d | as late as possible | 李雪纯; 马晓艳 | 16h | 800 |
| 63 | 3.3.2 | 监控评审 | 1d | 2020-06-11 | 2020-06-11 | 62 | 11d | 0d | as late as possible | 马晓艳; 赵一鸣 | 16h | 800 |
| 64 | 3.3.3 | 变更评审 | 1d | 2020-06-12 | 2020-06-12 | 63 | 11d | 0d | as late as possible | 马晓艳; 赵一鸣 | 16h | 800 |
| 65 | 3.3.4 | 例会 | 1d | 2020-06-15 | 2020-06-15 | 64 | 11d | 0d | as late as possible | 安文悦; 曾雨晴; 李雪纯; 刘梦婷; 马晓艳; 赵一鸣 | 48h | 2,400 |
| 66 | 3.3.5 | **管理干系人** | 1d | 2020-06-15 | 2020-06-15 |  | 14d | 0d | as late as possible |  | 24h | 1,200 |
| 67 | 3.3.5.1 | 发布项目信息 | 1d | 2020-06-15 | 2020-06-15 | 41 | 14d | 0d | as late as possible | 马晓艳 | 8h | 400 |
| 68 | 3.3.5.2 | 报告监控指标 | 1d | 2020-06-15 | 2020-06-15 | 41 | 14d | 0d | as late as possible | 马晓艳 | 8h | 400 |
| 69 | 3.3.5.3 | 干系人沟通 | 1d | 2020-06-15 | 2020-06-15 | 41 | 14d | 0d | as late as possible | 马晓艳 | 8h | 400 |
| 70 | 3.3.6 | **团队建设** | 1d | 2020-06-15 | 2020-06-15 |  | 14d | 0d | as late as possible |  | 144h | 7,200 |
| 71 | 3.3.6.1 | 培训 | 1d | 2020-06-15 | 2020-06-15 | 41 | 14d | 0d | as late as possible | 安文悦; 曾雨晴; 李雪纯; 刘梦婷; 马晓艳; 赵一鸣 | 48h | 2,400 |
| 72 | 3.3.6.2 | 娱乐活动 | 1d | 2020-06-15 | 2020-06-15 | 41 | 14d | 0d | as late as possible | 安文悦; 曾雨晴; 李雪纯; 刘梦婷; 马晓艳; 赵一鸣 | 48h | 2,400 |
| 73 | 3.3.6.3 | 沟通 | 1d | 2020-06-15 | 2020-06-15 | 41 | 14d | 0d | as late as possible | 安文悦; 曾雨晴; 李雪纯; 刘梦婷; 马晓艳; 赵一鸣 | 48h | 2,400 |
| 74 | 3.3.7 | 采购 | 1d | 2020-06-15 | 2020-06-15 | 41 | 14d | 0d | as late as possible | 马晓艳 | 8h | 400 |
| 75 | 3.3.8 | 项目验收 | 1d | 2020-06-12 | 2020-06-12 | 42 | -3d | 0d | as late as possible | 安文悦; 曾雨晴; 李雪纯; 刘梦婷; 马晓艳; 赵一鸣 | 48h | 2,400 |
| 76 | 4 | **收尾** | 1d | 2020-06-15 | 2020-06-15 |  | -3d | 0d | as late as possible |  | 88h | 4,400 |
| 77 | 4.1 | 项目终验 | 1d | 2020-06-15 | 2020-06-15 | 75 | -3d | 0d | as late as possible | 安文悦; 曾雨晴; 李雪纯; 刘梦婷; 马晓艳; 赵一鸣 | 48h | 2,400 |
| 78 | 4.2 | 结束采购 | 1d | 2020-06-15 | 2020-06-15 | 75 | -3d | 0d | as late as possible | 马晓艳 | 8h | 400 |
| 79 | 4.3 | 项目内部收尾 | 1d | 2020-06-15 | 2020-06-15 | 75 | -3d | 0d | as late as possible | 安文悦; 曾雨晴; 李雪纯; 刘梦婷 | 32h | 1,600 |
